# ehSoja

Schedule from MS Project, 2022-08-29 to 2022-11-27, costs in R$, A marks actual dates.

## Calendars

- Padrão: Mon-Fri 09:00-12:00, 13:00-18:00; Sat-Sun off.

## Resources

| Resource | Rate | Cost per use |
| --- | --- | --- |
| Pedro | 50 | 50 |
| Bárbara | 50 | 50 |
| Rafael | 50 | 50 |
| Anna Carolina | 50 | 50 |
| Maria Eduarda | 50 | 50 |
| Gabriel | 50 | 50 |
| Anna | 50 | 50 |

## Schedule

| ID | WBS | Task | Duration | Start | Finish | Predecessors | Complete | Remaining | Actual finish | Constraint | Resources | Work | Actual work | Cost | Actual cost |
| --- | --- | --- | --- | --- | --- | --- | --- | --- | --- | --- | --- | --- | --- | --- | --- |
| 1 | 1 | **ehSoja** | 66d | 2022-08-29 A | 2022-11-27 |  | 60% | 26.49d |  |  |  | 1032h | 700h | 59,100 | 41,700 |
| 2 | 1.1 | **Sprint 1** | 16d | 2022-08-29 A | 2022-09-18 |  | 100% |  | 2022-09-16 |  |  | 504h | 504h | 26,400 | 26,400 |
| 3 | 1.1.1 | **Treinamento do modelo básico para reconhecer as plantas de soja** | 13d | 2022-08-29 A | 2022-09-14 A |  | 100% |  |  |  |  | 368h | 368h | 19,000 | 19,000 |
| 4 | 1.1.1.1 | Estudos sobre reconhecimento de imagem | 5d | 2022-08-29 A | 2022-09-02 A |  | 100% |  |  |  | Anna; Anna Carolina; Bárbara; Gabriel; Maria Eduarda; Pedro; Rafael | 280h | 280h | 14,350 | 14,350 |
| 5 | 1.1.1.2 | Tratamento das imagens recebidas | 1d | 2022-09-05 A | 2022-09-05 A | 4 | 100% |  |  |  | Bárbara; Rafael | 16h | 16h | 900 | 900 |
| 6 | 1.1.1.3 | Criação do Dataset para o treinamento do modelo de reconhecimento de plantas de soja | 5d | 2022-09-06 A | 2022-09-12 A | 5 | 100% |  |  |  | Maria Eduarda | 40h | 40h | 2,050 | 2,050 |
| 7 | 1.1.1.4 | Treinamento de um modelo que reconheça plantas de soja | 2d | 2022-09-13 A | 2022-09-14 A | 6 | 100% |  |  |  | Bárbara; Gabriel | 32h | 32h | 1,700 | 1,700 |
| 8 | 1.1.2 | **Treinamento do modelo básico para reconhecer as vagens na planta de soja** | 8d | 2022-08-29 A | 2022-09-07 A |  | 100% |  |  |  |  | 80h | 80h | 4,300 | 4,300 |
| 9 | 1.1.2.1 | Estudos sobre reconhecimento de imagem | 1d | 2022-08-29 A | 2022-08-29 A |  | 100% |  |  |  | Bárbara; Pedro | 16h | 16h | 900 | 900 |
| 10 | 1.1.2.2 | Estudos sobre segmentação de imagem | 1d | 2022-08-30 A | 2022-08-30 A | 9 | 100% |  |  |  | Pedro; Rafael | 16h | 16h | 900 | 900 |
| 11 | 1.1.2.3 | Criação do Dataset para o treinamento do modelo de reconhecimento de vagens | 4d | 2022-08-31 A | 2022-09-05 A | 10 | 100% |  |  |  | Maria Eduarda | 32h | 32h | 1,650 | 1,650 |
| 12 | 1.1.2.4 | Treinamento do modelo que reconheça as vagens na planta de soja | 2d | 2022-09-06 A | 2022-09-07 A | 11 | 100% |  |  |  | Bárbara | 16h | 16h | 850 | 850 |
| 13 | 1.1.3 | **Destacar, na imagem, a planta de soja e as suas vagens** | 2d | 2022-09-15 A | 2022-09-16 A | 3, 8 | 100% |  |  |  |  | 56h | 56h | 3,100 | 3,100 |
| 14 | 1.1.3.1 | Obter imagens com as suas características reconhecidas e os dados do reconhecimento | 1d | 2022-09-15 A | 2022-09-15 A |  | 100% |  |  |  | Bárbara; Gabriel; Rafael | 24h | 24h | 1,350 | 1,350 |
| 15 | 1.1.3.2 | Realizar a interpretação dos dados do reconhecimento das imagens | 1d | 2022-09-15 A | 2022-09-15 A |  | 100% |  |  |  | Bárbara; Rafael | 16h | 16h | 900 | 900 |
| 16 | 1.1.3.3 | Exibir os dados do reconhecimento das imagens juntamente à imagem em si | 2d | 2022-09-15 A | 2022-09-16 A |  | 100% |  |  |  | Bárbara | 16h | 16h | 850 | 850 |
| 17 | 1.2 | **Sprint 2** | 16d | 2022-09-19 A | 2022-10-09 | 2 | 98% | 0.38d |  |  |  | 200h | 196h | 15,500 | 15,300 |
| 18 | 1.2.1 | **Criação/alteração da interface do aplicativo onde as imagens das novas plantas são registradas como amostras** | 10d | 2022-09-19 A | 2022-09-30 A |  | 100% |  |  |  |  | 136h | 136h | 12,050 | 12,050 |
| 19 | 1.2.1.1 | **Conseguir executar o servidor do aplicativo eSoja** | 10d | 2022-09-19 A | 2022-09-30 A |  | 100% |  |  |  |  | 88h | 88h | 9,550 | 9,550 |
| 20 | 1.2.1.1.1 | Reconfigurar aplicativo para o funcionamento de todas as suas áreas | 4d | 2022-09-19 A | 2022-09-22 A |  | 100% |  |  |  | Bárbara; Gabriel | 64h | 64h | 6,450 | 6,450 |
| 21 | 1.2.1.1.2 | Realizar o upload do código do servidor com as devidas correções | 1d | 2022-09-28 A | 2022-09-28 A | 20 | 100% |  |  |  | Bárbara | 8h | 8h | 900 | 900 |
| 22 | 1.2.1.1.3 | Criar readme contendo instruções para montagem do ambiente de desenvolvimento e de instalação do servidor para a equipe | 2d | 2022-09-29 A | 2022-09-30 A | 21 | 100% |  |  |  | Anna | 16h | 16h | 1,300 | 1,300 |
| 23 | 1.2.1.2 | **Conseguir executar e instalar o aplicativo eSoja no celular** | 6d | 2022-09-19 A | 2022-09-26 A |  | 100% |  |  |  |  | 48h | 48h | 2,500 | 2,500 |
| 24 | 1.2.1.2.1 | Realizar upload do código do aplicativo contendo correções | 5d | 2022-09-19 A | 2022-09-23 A |  | 100% |  |  |  | Bárbara | 40h | 40h | 2,050 | 2,050 |
| 25 | 1.2.1.2.2 | Criar readme contendo instruções para montagem do ambiente de desenvolvimento e de instalação do aplicativo para a equipe | 1d | 2022-09-26 A | 2022-09-26 A | 24 | 100% |  |  | start no earlier than 2022-09-26 | Anna | 8h | 8h | 450 | 450 |

| ID | WBS | Task | Duration | Start | Finish | Predecessors | Complete | Remaining | Total slack | Resources | Work | Actual work | Cost | Actual cost |
| --- | --- | --- | --- | --- | --- | --- | --- | --- | --- | --- | --- | --- | --- | --- |
| 26 | 1.2.2 | **Interface para exibir ao usuário as amostras analisadas** | 14.5d | 2022-09-19 A | 2022-10-07 | 18 | 94% | 0.91d | 5.5d |  | 64h | 60h | 3,450 | 3,250 |
| 27 | 1.2.2.1 | Desenvolver serviço que repassa as imagens recebidas ao modelo de reconhecimento e as retorna com os dados prontos para enviar ao aplicativo | 5d | 2022-09-19 A | 2022-10-06 A |  | 100% |  |  | Rafael; Bárbara | 40h | 40h | 2,100 | 2,100 |
| 28 | 1.2.2.2 | Desenvolver controlador para receber as requisições do aplicativo e processar as imagens recebidas | 1d | 2022-09-19 A | 2022-09-19 A | 27 | 100% |  |  | Bárbara | 8h | 8h | 450 | 450 |
| 29 | 1.2.2.3 | Desenvolver interface, no aplicativo eSoja, para o envio das amostras que serão utilizadas para o reconhecimento | 1d | 2022-09-19 A | 2022-10-07 | 27, 28 | 70% | 0.3d | 0d | Rafael | 8h | 5.6h | 450 | 330 |
| 30 | 1.2.2.4 | Desenvolver interface, no aplicativo eSoja, para a exibição dos resultados do reconhecimento das imagens enviadas | 1d | 2022-09-19 A | 2022-10-07 | 27, 28, 29 | 80% | 0.2d | 5.5d | Rafael | 8h | 6.4h | 450 | 370 |
| 31 | 1.3 | **Sprint 3** | 16d | 2022-10-17 | 2022-11-06 | 17 |  |  |  |  | 184h |  | 9,700 |  |
| 32 | 1.3.1 | **Aperfeiçoar a precisão do modelo de reconhecimento de plantas de soja e vagens** | 10d | 2022-10-17 | 2022-10-28 |  |  |  | 0d |  | 144h |  | 7,550 |  |
| 33 | 1.3.1.1 | Realizar estudos sobre como o modelo de reconhecimento pode melhorar | 4d | 2022-10-17 | 2022-10-20 |  |  |  | 0d | Gabriel; Pedro; Maria Eduarda | 96h |  | 4,950 |  |
| 34 | 1.3.1.2 | Desenvolver melhorias no modelo de reconhecimento | 3d | 2022-10-21 | 2022-10-25 | 33 |  |  | 0d | Bárbara | 24h |  | 1,250 |  |
| 35 | 1.3.1.3 | Treinar um novo modelo contendo as melhorias | 1d | 2022-10-26 | 2022-10-26 | 34 |  |  | 0d | Bárbara | 8h |  | 450 |  |
| 36 | 1.3.1.4 | Realizar o upload do novo modelo para que ele possa ser utilizado | 1d | 2022-10-27 | 2022-10-27 | 34, 35 |  |  | 0d | Bárbara | 8h |  | 450 |  |
| 37 | 1.3.1.5 | Substituir o modelo antigo pelo mais novo e mais eficiente | 1d | 2022-10-28 | 2022-10-28 | 34, 35, 36 |  |  | 0d | Bárbara | 8h |  | 450 |  |
| 38 | 1.3.2 | **Realizar a contagem de quantas vagens foram encontradas em uma planta de soja** | 3d | 2022-10-31 | 2022-11-02 | 32 |  |  |  |  | 24h |  | 1,300 |  |
| 39 | 1.3.2.1 | Desenvolver código para registrar a quantidade de vagens foram encontradas na planta de soja | 2d | 2022-10-31 | 2022-11-01 |  |  |  | 0d | Rafael | 16h |  | 850 |  |
| 40 | 1.3.2.2 | Inserir informação na resposta a ser enviada ao aplicativo eSoja | 1d | 2022-11-02 | 2022-11-02 | 39 |  |  | 0d | Gabriel | 8h |  | 450 |  |
| 41 | 1.3.3 | **Exibir, no aplicativo eSoja, a quantidade de vagens, de acordo com o resultado da análise da imagem** | 2d | 2022-11-03 | 2022-11-04 | 38 |  |  | 0d |  | 16h |  | 850 |  |
| 42 | 1.3.3.1 | Criar uma interface, no aplicativo eSoja, que exiba a quantidade de vagens reconhecidas | 2d | 2022-11-03 | 2022-11-04 |  |  |  | 0d | Maria Eduarda | 16h |  | 850 |  |
| 43 | 1.4 | **Sprint 4** | 16d | 2022-11-07 | 2022-11-27 | 31 |  |  |  |  | 144h |  | 7,500 |  |
| 44 | 1.4.1 | **Exibir a quantidade de grãos nas amostras, de acordo com o resultado da análise da imagem** | 15d | 2022-11-07 | 2022-11-25 |  |  |  | 0d |  | 144h |  | 7,500 |  |
| 45 | 1.4.1.1 | Estudar sobre cálculo da estimativa de grãos na planta | 3d | 2022-11-07 | 2022-11-09 |  |  |  | 0d | Pedro | 24h |  | 1,250 |  |
| 46 | 1.4.1.2 | Desenvolver cálculo da estimativa de grãos na planta | 2d | 2022-11-10 | 2022-11-11 | 45 |  |  | 0d | Bárbara | 16h |  | 850 |  |
| 47 | 1.4.1.3 | Inserir informação na resposta a ser enviada ao aplicativo eSoja | 2d | 2022-11-14 | 2022-11-15 | 46 |  |  | 0d | Bárbara | 16h |  | 850 |  |
| 48 | 1.4.1.4 | Desenvolver alteração, na interface do aplicativo eSoja, que irá exibir a estimativa de grãos na planta | 5d | 2022-11-16 | 2022-11-22 | 46, 47 |  |  | 0d | Rafael | 40h |  | 2,050 |  |
| 49 | 1.4.1.5 | Realizar melhorias finais no aplicativo | 3d | 2022-11-23 | 2022-11-25 | 48 |  |  | 0d | Anna Carolina; Maria Eduarda | 48h |  | 2,500 |  |
